# SpHeroBot

Schedule from MS Project, 2017-12-11 to 2018-05-15, A marks actual dates.

## Calendars

- Standard: Mon-Fri 08:00-12:00, 13:00-17:00; Sat-Sun off.

## Resources

| Resource |
| --- |
| Davide Vitagliano |
| Marco Fincato |
| Giovanni Barozzi |
| Riccardo Principe |
| Andrea Goattin |

## Schedule

| ID | WBS | Task | Type | Duration | Start | Finish | Predecessors | Complete | Remaining | Resources | Work | Actual work |
| --- | --- | --- | --- | --- | --- | --- | --- | --- | --- | --- | --- | --- |
| 1 | 1 | **Progetto SPheroBot** |  | 112d | 2017-12-11 A | 2018-05-15 |  | 28% | 80.98d |  | 1727.2h | 599.2h |
| 2 | 1.1 | **Analisi** |  | 16d | 2017-12-11 A | 2017-12-31 A |  | 100% |  |  | 255.2h | 255.2h |
| 3 | 1.1.1 | **Studio di fattibilità** |  | 2d | 2017-12-11 A | 2017-12-12 A |  | 100% |  | Davide Vitagliano [10%]; Marco Fincato [180%]; Giovanni Barozzi [10%]; Riccardo Principe [10%] | 112h | 112h |
| 4 | 1.1.1.1 | Analisi del problema | manual | 1d | 2017-12-11 A | 2017-12-11 A |  | 100% |  | Marco Fincato | 8h | 8h |
| 5 | 1.1.1.2 | Stesura del documento | manual | 1d | 2017-12-12 A | 2017-12-12 A | 4 | 100% |  | Marco Fincato [80%]; Giovanni Barozzi [20%] | 16h | 16h |
| 6 | 1.1.1.3 | Controllo del documento | manual | 1d | 2017-12-12 A | 2017-12-12 A | 5SS | 100% |  | Davide Vitagliano [33%]; Giovanni Barozzi [33%]; Riccardo Principe [33%] | 24h | 24h |
| 7 | 1.1.1.4 | Valutazione Studio di fattibilità | milestone, manual | 0d | 2017-12-12 A | 2017-12-12 A | 6, 5 | 100% |  |  |  |  |
| 8 | 1.1.2 | **Analisi dei requisiti** |  | 4d | 2017-12-27 A | 2017-12-31 A |  | 100% |  | Marco Fincato [35%]; Giovanni Barozzi [35%]; Riccardo Principe [20%] | 143.2h | 143.2h |
| 9 | 1.1.2.1 | Analisi del capitolato | manual | 3d | 2017-12-27 A | 2017-12-29 A | 7 | 100% |  | Marco Fincato [10%]; Riccardo Principe [90%] | 24h | 24h |
| 10 | 1.1.2.2 | Stesura del documento | manual | 3d | 2017-12-28 A | 2017-12-30 A | 9 | 100% |  | Riccardo Principe [80%]; Marco Fincato [20%] | 24h | 24h |
| 11 | 1.1.2.3 | Controllo del documento | manual | 2d | 2017-12-30 A | 2017-12-31 A | 10 | 100% |  | Giovanni Barozzi | 16h | 16h |
| 12 | 1.1.2.4 | Valutazione Andalisi dei requisiti | milestone, manual | 0d | 2017-12-31 A | 2017-12-31 A | 11 | 100% |  |  |  |  |
| 13 | 1.2 | **Progettazione** |  | 38d | 2018-01-28 A | 2018-03-20 A |  | 100% |  |  | 336h | 336h |
| 14 | 1.2.1 | Use case | manual | 3d | 2018-01-28 A | 2018-01-30 A | 12 | 100% |  | Giovanni Barozzi | 24h | 24h |
| 15 | 1.2.2 | Diagramma delle classi (Analista) | manual | 5d | 2018-01-31 A | 2018-02-06 A | 14 | 100% |  | Marco Fincato | 40h | 40h |
| 16 | 1.2.3 | Grafi di stato | manual | 2d | 2018-02-07 A | 2018-02-08 A | 15 | 100% |  | Marco Fincato | 16h | 16h |
| 17 | 1.2.4 | Diagramma delle classi (Progettista) | manual | 4d | 2018-02-07 A | 2018-02-12 A | 15, 16SS | 100% |  | Andrea Goattin | 32h | 32h |
| 18 | 1.2.5 | Diagrammi di attività (Analista) | manual | 9d | 2018-02-09 A | 2018-02-21 A | 16, 17 | 100% |  | Marco Fincato | 72h | 72h |
| 19 | 1.2.6 | Diagrammi di attività (Progettista) | manual | 19d | 2018-02-22 A | 2018-03-20 A | 18 | 100% |  | Davide Vitagliano [25%]; Giovanni Barozzi [25%]; Riccardo Principe [25%]; Andrea Goattin [25%] | 152h | 152h |
| 20 | 1.3 | **Programmazione** |  | 24d | 2018-03-21 A | 2018-04-22 |  | 1% | 23.79d |  | 920h | 8h |
| 21 | 1.3.1 | Assegnazione dei moduli | manual | 1d | 2018-03-21 A | 2018-03-21 A | 19 | 100% |  | Davide Vitagliano | 8h | 8h |
| 22 | 1.3.2 | Filter | manual | 18d | 2018-03-22 | 2018-04-15 | 21 |  |  | Giovanni Barozzi | 144h |  |
| 23 | 1.3.3 | MPU6050 | manual | 18d | 2018-03-22 | 2018-04-15 | 22SS, 21 |  |  | Davide Vitagliano | 144h |  |
| 24 | 1.3.4 | Motors | manual | 18d | 2018-03-22 | 2018-04-15 | 21, 23SS, 22SS |  |  | Andrea Goattin | 144h |  |
| 25 | 1.3.5 | IMU | manual | 18d | 2018-03-22 | 2018-04-15 | 21, 24SS, 23SS, 22SS |  |  | Marco Fincato | 144h |  |
| 26 | 1.3.6 | Movement | manual | 18d | 2018-03-22 | 2018-04-15 | 21, 25SS, 24SS, 23SS, 22SS |  |  | Riccardo Principe | 144h |  |
| 27 | 1.3.7 | Bluetooth | manual | 9d | 2018-03-22 | 2018-04-03 | 21, 26SS, 25SS, 24SS, 23SS, 22SS |  |  | Andrea Goattin | 72h |  |
| 28 | 1.3.8 | Control | manual | 9d | 2018-04-04 | 2018-04-15 | 27 |  |  | Andrea Goattin | 72h |  |
| 29 | 1.3.9 | Collaudo interazione moduli | manual | 6d | 2018-04-16 | 2018-04-22 | 28, 26, 25, 24, 23, 22 |  |  | Giovanni Barozzi | 48h |  |

| ID | WBS | Task | Type | Duration | Start | Finish | Predecessors | Resources | Work |
| --- | --- | --- | --- | --- | --- | --- | --- | --- | --- |
| 30 | 1.4 | **Validazione** |  | 17d | 2018-04-23 | 2018-05-15 |  |  | 216h |
| 31 | 1.4.1 | Assegnazione test sui moduli | manual | 1d | 2018-04-23 | 2018-04-23 | 29 | Davide Vitagliano | 8h |
| 32 | 1.4.2 | Verifica statica | manual | 6d | 2018-04-24 | 2018-05-01 | 31 | Riccardo Principe [50%]; Davide Vitagliano [50%] | 48h |
| 33 | 1.4.3 | Verifica black box | manual | 8d | 2018-04-30 | 2018-05-09 | 32 | Giovanni Barozzi [70%]; Riccardo Principe [15%]; Davide Vitagliano [15%] | 64h |
| 34 | 1.4.4 | Verifica white box | manual | 8d | 2018-04-30 | 2018-05-09 | 33SS | Marco Fincato [80%]; Andrea Goattin [20%] | 64h |
| 35 | 1.4.5 | Finalizzazione programma | manual | 4d | 2018-05-10 | 2018-05-15 | 34, 33 | Andrea Goattin [80%]; Giovanni Barozzi [20%] | 32h |
| 36 | 1.4.6 | Valutazione finale | milestone, manual | 0d | 2018-05-15 | 2018-05-15 | 35 |  |  |
| 37 | 2 | Presentazione argomento Verifica e validazione software | milestone, manual | 0d | 2018-03-06 | 2018-03-06 |  |  |  |
